# SW-B-001_Planeación-001

Schedule from MS Project, 2017-01-09 to 2017-03-06.

## Calendars

- Estándar: Mon-Fri 09:00-13:00, 15:00-19:00; Sat 09:00-13:00; Sun off.

## Schedule

| ID | WBS | Task | Duration | Start | Finish | Predecessors | Total slack | Free slack |
| --- | --- | --- | --- | --- | --- | --- | --- | --- |
| 1 | 1 | **RPPC_APCD_001** | 39.27d | 2017-01-09 09:00 | 2017-02-27 17:12 |  | 5.72d |  |
| 2 | 1.1 | Formación del equipo | 2h | 2017-01-09 09:00 | 2017-01-09 11:00 |  | 5.72d | 0d |
| 3 | 1.2 | **Fase/Iteración 1** | 24.88d | 2017-01-09 11:00 | 2017-02-09 10:00 | 2 | 5.72d | 0d |
| 4 | 1.2.1 | **Análisis** | 5.38d | 2017-01-09 11:00 | 2017-01-16 10:00 |  | 5.72d | 0d |
| 5 | 1.2.1.1 | **Elicitación** | 2.38d | 2017-01-09 11:00 | 2017-01-11 16:00 |  | 5.72d | 0d |
| 6 | 1.2.1.1.1 | Definir estrategia de recolección de datos | 1h | 2017-01-09 11:00 | 2017-01-09 12:00 |  | 5.72d | 0d |
| 7 | 1.2.1.1.2 | Planificación de reuniones de licitación | 2h | 2017-01-09 12:00 | 2017-01-09 16:00 | 6 | 5.72d | 0d |
| 8 | 1.2.1.1.3 | Identificar procesos del sistema | 8h | 2017-01-09 16:00 | 2017-01-10 16:00 | 7 | 5.72d | 0d |
| 9 | 1.2.1.1.4 | Identificar requerimientos funcionales | 6h | 2017-01-10 16:00 | 2017-01-11 12:00 | 8 | 5.72d | 0d |
| 10 | 1.2.1.1.5 | Identificar requerimientos no funcionales | 2h | 2017-01-11 12:00 | 2017-01-11 16:00 | 9 | 5.72d |  |
| 11 | 1.2.1.2 | **Especificación** | 2.25d | 2017-01-11 16:00 | 2017-01-13 18:00 | 5 | 5.72d | 0d |
| 12 | 1.2.1.2.1 | Evaluación de requerimientos | 2h | 2017-01-11 16:00 | 2017-01-11 18:00 |  | 5.72d | 0d |
| 13 | 1.2.1.2.2 | SRS | 2d | 2017-01-11 18:00 | 2017-01-13 18:00 | 12 | 5.72d |  |
| 14 | 1.2.1.3 | **Gestión de requerimientos** | 0.75d | 2017-01-13 18:00 | 2017-01-16 10:00 | 11 | 5.72d |  |
| 15 | 1.2.1.3.1 | Priorizar requerimientos | 2h | 2017-01-13 18:00 | 2017-01-14 10:00 |  | 5.72d | 0d |
| 16 | 1.2.1.3.2 | Almacenar en repositorio | 1h | 2017-01-14 10:00 | 2017-01-14 11:00 | 15 | 5.72d | 0d |
| 17 | 1.2.1.3.3 | Asignar a desarrolladores de software | 1h | 2017-01-14 11:00 | 2017-01-14 12:00 | 16 | 5.72d | 0d |
| 18 | 1.2.1.3.4 | Administración de cambios de requerimientos | 1h | 2017-01-14 12:00 | 2017-01-14 13:00 | 17 | 5.72d | 0d |
| 19 | 1.2.1.3.5 | Administración de la trazabilidad de requerimientos | 1h | 2017-01-16 09:00 | 2017-01-16 10:00 | 18 | 5.72d |  |
| 20 | 1.2.2 | **Planificación** | 2.5d | 2017-01-16 10:00 | 2017-01-18 16:00 | 4 | 5.72d | 0d |
| 21 | 1.2.2.1 | Definición del ciclo de vida | 2h | 2017-01-16 10:00 | 2017-01-16 12:00 |  | 5.72d | 0d |
| 22 | 1.2.2.2 | Definición de políticas | 1h | 2017-01-16 12:00 | 2017-01-16 13:00 | 21 | 5.72d | 0d |
| 23 | 1.2.2.3 | Actualizar plan de proyecto | 1h | 2017-01-16 15:00 | 2017-01-16 16:00 | 22 | 5.72d | 0d |
| 24 | 1.2.2.4 | **Estimación** | 2d | 2017-01-16 16:00 | 2017-01-18 16:00 | 23 | 5.72d |  |
| 25 | 1.2.2.4.1 | Actualizar WBS/Calendario | 1d | 2017-01-16 16:00 | 2017-01-17 16:00 |  | 5.72d | 0d |
| 26 | 1.2.2.4.2 | Diccionario del WBS | 1d | 2017-01-17 16:00 | 2017-01-18 16:00 | 25 | 5.72d |  |

Notes:
- 2: Establecimiento del equipo de trabajo
- 3: Primera Iteración a cubrir
- 4: Conjunto de Actividades para Análisis
- 5: Planeación de Elicitacion
- 6: Análisis y Elección de la estrategia para la recolección de datos a emplear
- 7: Agendacion de reuniones
- 8: Análisis del actual proceso empleado a optimizar
- 9: Análisis de requerimientos propios del funcionamiento
- 10: Análisis de requerimientos ajenos al funcionamiento
- 11: Disección de Especificaciones
- 12: Selección de requerimientos prioritarios
- 13: Establecimiento de requerimientos
- 14: Administración de requerimientos
- 15: Selección de requerimientos por importancia
- 16: Resguardo en repositorio
- 17: Distribución de responsabilidades a desarrolladores
- 18: Gestión en modificaciones de requerimientos
- 19: Gestión de seguimiento para requerimientos
- 20: Estimación y Planeación para los elementos a cubrir en la interacción 1
- 21: Evaluación y selección del ciclo de vida optimo
- 22: Establecimiento de políticas a considerar
- 23: Re-integración del plan de proyecto
- 24: Agendacion prevista de tareas
- 25: Re-estructuración de WBS
- 26: Definición del Diccionario WBS

| ID | WBS | Task | Duration | Start | Finish | Predecessors | Total slack | Free slack |
| --- | --- | --- | --- | --- | --- | --- | --- | --- |
| 27 | 1.2.3 | **Diseño** | 9.75d | 2017-01-18 16:00 | 2017-01-31 12:00 | 20 | 5.72d | 0d |
| 28 | 1.2.3.1 | Definir la arquitectura | 3h | 2017-01-18 16:00 | 2017-01-18 19:00 |  | 5.72d | 0d |
| 29 | 1.2.3.2 | Realizar casos de uso | 1d | 2017-01-19 09:00 | 2017-01-19 19:00 | 28 | 5.72d | 0d |
| 30 | 1.2.3.3 | Realizar diagramas de secuencia | 1d | 2017-01-20 09:00 | 2017-01-20 19:00 | 29 | 5.72d | 0d |
| 31 | 1.2.3.4 | Realizar diagramas de clases | 2d | 2017-01-21 09:00 | 2017-01-24 13:00 | 30 | 5.72d | 0d |
| 32 | 1.2.3.5 | Realizar diagrama de actividades | 1d | 2017-01-24 15:00 | 2017-01-25 13:00 | 31 | 5.72d | 0d |
| 33 | 1.2.3.6 | Realizar el mapa de navegación | 3h | 2017-01-25 15:00 | 2017-01-25 18:00 | 32 | 5.72d | 0d |
| 34 | 1.2.3.7 | Realizar maquetado (bocetos) | 2d | 2017-01-25 18:00 | 2017-01-27 18:00 | 33 | 5.72d | 0d |
| 35 | 1.2.3.8 | **Diseño de diagramas de la base de datos** | 2d | 2017-01-27 18:00 | 2017-01-31 12:00 | 34 | 5.72d |  |
| 36 | 1.2.3.8.1 | Realizar el diagrama E-R | 1d | 2017-01-27 18:00 | 2017-01-30 12:00 |  | 5.72d | 0d |
| 37 | 1.2.3.8.2 | Realizar el diagrama Relacional | 1d | 2017-01-30 12:00 | 2017-01-31 12:00 | 36 | 5.72d |  |
| 38 | 1.2.4 | **Codificación** | 5.25d | 2017-01-31 12:00 | 2017-02-07 10:00 | 27 | 5.72d | 0d |
| 39 | 1.2.4.1 | Codificación de la base de datos | 3h | 2017-01-31 12:00 | 2017-01-31 17:00 |  | 5.72d | 0d |
| 40 | 1.2.4.2 | **Modulo Usuarios** | 4.88d | 2017-01-31 17:00 | 2017-02-07 10:00 | 39 | 5.72d |  |
| 41 | 1.2.4.2.1 | Codificar interfaz | 2d | 2017-01-31 17:00 | 2017-02-02 17:00 |  | 5.72d | 0d |
| 42 | 1.2.4.2.2 | Clases de Usuarios | 2d | 2017-02-02 17:00 | 2017-02-06 11:00 | 41 | 5.72d | 0d |
| 43 | 1.2.4.2.3 | Realizar conexión a la base de datos | 1h | 2017-02-06 11:00 | 2017-02-06 12:00 | 42 | 5.72d | 0d |
| 44 | 1.2.4.2.4 | Alta de Usuario | 1h | 2017-02-06 12:00 | 2017-02-06 13:00 | 43 | 5.72d | 0d |
| 45 | 1.2.4.2.5 | Baja de Usuario | 1h | 2017-02-06 15:00 | 2017-02-06 16:00 | 44 | 5.72d | 0d |
| 46 | 1.2.4.2.6 | Actualización de Usuario | 2h | 2017-02-06 16:00 | 2017-02-06 18:00 | 45 | 5.72d | 0d |
| 47 | 1.2.4.2.7 | Consultas de Usuario | 2h | 2017-02-06 18:00 | 2017-02-07 10:00 | 46 | 5.72d |  |
| 48 | 1.2.5 | **Pruebas** | 2d | 2017-02-07 10:00 | 2017-02-09 10:00 | 38 | 5.72d |  |
| 49 | 1.2.5.1 | **Realizar pruebas de caja blanca** | 2d | 2017-02-07 10:00 | 2017-02-09 10:00 |  | 5.72d |  |
| 50 | 1.2.5.1.1 | **Módulo de Usuarios** | 2d | 2017-02-07 10:00 | 2017-02-09 10:00 |  | 5.72d |  |
| 51 | 1.2.5.1.1.1 | Pruebas unitarias | 1d | 2017-02-07 10:00 | 2017-02-08 10:00 |  | 5.72d | 0d |
| 52 | 1.2.5.1.1.2 | Pruebas de modulo | 1d | 2017-02-08 10:00 | 2017-02-09 10:00 | 51 | 5.72d |  |

Notes:
- 27: Diagramas a emplear para esta interacción
- 28: Establecimiento de la arquitectura a usar
- 29: Diagrama de caso de uso necesarios
- 30: Diagramas de secuencia basado en los caso de uso
- 31: Establecimiento de clases necesarias
- 32: Diagrama de componentes a usar
- 33: Identificación de la navegación a seguir
- 34: Maquetado visual basado en diagrama ya elaborados
- 35: Diagramas para la creación de la BD
- 36: Diagrama de Entidades y Relaciones propias de la BD
- 37: Diagrama relacional para la creación de la BD
- 38: Programación de módulos
- 39: Creación del script para la BD
- 40: Modulo para Libros
- 41: Creación de interfaces
- 42: Creación de clases para Libros
- 43: Creación de conexión con la BD
- 44: Creación de para la realización de altas en libros
- 45: Creación para la dar bajas en Libros
- 46: Creación para la modificación de libros
- 47: Creación de consultas para selección de información de libros
- 48: Verificación de módulos terminados
- 49: Pruebas de funcionalidad
- 50: Verificación del modulo Libros
- 51: Pruebas por Unidad
- 52: Pruebas de Modulo completo

| ID | WBS | Task | Duration | Start | Finish | Predecessors | Total slack | Free slack |
| --- | --- | --- | --- | --- | --- | --- | --- | --- |
| 53 | 1.3 | **Fase/Iteración 2** | 11.15d | 2017-02-09 10:00 | 2017-02-23 11:12 | 3 | 5.72d | 0d |
| 54 | 1.3.1 | **Análisis** | 4.81d | 2017-02-09 10:00 | 2017-02-15 12:30 |  | 5.72d | 0d |
| 55 | 1.3.1.1 | **Elicitación** | 2d | 2017-02-09 10:00 | 2017-02-11 10:00 |  | 5.72d | 0d |
| 56 | 1.3.1.1.1 | Identificar procesos del sistema | 8h | 2017-02-09 10:00 | 2017-02-10 10:00 |  | 5.72d | 0d |
| 57 | 1.3.1.1.2 | identificar requerimientos funcionales | 6h | 2017-02-10 10:00 | 2017-02-10 18:00 | 56 | 5.72d | 0d |
| 58 | 1.3.1.1.3 | Identificar requerimientos no funcionales | 2h | 2017-02-10 18:00 | 2017-02-11 10:00 | 57 | 5.72d |  |
| 59 | 1.3.1.2 | **Especificación** | 2.25d | 2017-02-11 10:00 | 2017-02-14 18:00 | 55 | 5.72d | 0d |
| 60 | 1.3.1.2.1 | Evaluación de requerimientos | 2h | 2017-02-11 10:00 | 2017-02-11 12:00 |  | 5.72d | 0d |
| 61 | 1.3.1.2.2 | SRS | 16h | 2017-02-11 12:00 | 2017-02-14 18:00 | 60 | 5.72d |  |
| 62 | 1.3.1.3 | **Gestión de requerimientos** | 0.56d | 2017-02-14 18:00 | 2017-02-15 12:30 | 59 | 5.72d |  |
| 63 | 1.3.1.3.1 | Priorizar requerimientos | 1h | 2017-02-14 18:00 | 2017-02-14 19:00 |  | 5.72d | 0d |
| 64 | 1.3.1.3.2 | Almacenar en repositorio | 0.5h | 2017-02-15 09:00 | 2017-02-15 09:30 | 63 | 5.72d | 0d |
| 65 | 1.3.1.3.3 | Asignar a desarrolladores de software | 2h | 2017-02-15 09:30 | 2017-02-15 11:30 | 64 | 5.72d | 0d |
| 66 | 1.3.1.3.4 | Administración de cambios de requerimientos | 0.5h | 2017-02-15 11:30 | 2017-02-15 12:00 | 65 | 5.72d | 0d |
| 67 | 1.3.1.3.5 | Administración de la trazabilidad de requerimientos | 0.5h | 2017-02-15 12:00 | 2017-02-15 12:30 | 66 | 5.72d |  |
| 68 | 1.3.2 | **Planificación** | 0.75d | 2017-02-15 12:30 | 2017-02-16 10:30 | 54 | 5.72d | 0d |
| 69 | 1.3.2.1 | Actualizar plan de proyecto | 1h | 2017-02-15 12:30 | 2017-02-15 15:30 |  | 5.72d | 0d |
| 70 | 1.3.2.2 | **Estimación** | 0.62d | 2017-02-15 15:30 | 2017-02-16 10:30 | 69 | 5.72d |  |
| 71 | 1.3.2.2.1 | Actualizar WBS/Calendario | 1h | 2017-02-15 15:30 | 2017-02-15 16:30 |  | 5.72d | 0d |
| 72 | 1.3.2.2.2 | Actualizar Diccionario del WBS | 3h | 2017-02-15 16:30 | 2017-02-16 09:30 | 71 | 5.72d | 0d |
| 73 | 1.3.2.2.3 | Actualizar Costos | 1h | 2017-02-16 09:30 | 2017-02-16 10:30 | 72 | 5.72d |  |
| 74 | 1.3.3 | **Diseño** | 3.25d | 2017-02-16 10:30 | 2017-02-20 18:30 | 68 | 5.72d | 0d |
| 75 | 1.3.3.1 | Realizar casos de uso | 3h | 2017-02-16 10:30 | 2017-02-16 15:30 |  | 5.72d | 0d |
| 76 | 1.3.3.2 | Realizar diagramas de secuencia | 3h | 2017-02-16 15:30 | 2017-02-16 18:30 | 75 | 5.72d | 0d |
| 77 | 1.3.3.3 | Actualizar Realizar diagramas de clases | 6h | 2017-02-16 18:30 | 2017-02-17 16:30 | 76 | 5.72d | 0d |
| 78 | 1.3.3.4 | Actualizar Realizar diagrama de actividades | 3h | 2017-02-17 16:30 | 2017-02-18 09:30 | 77 | 5.72d | 0d |
| 79 | 1.3.3.5 | Actualizar Realizar diagrama de despliegue | 5h | 2017-02-18 09:30 | 2017-02-20 10:30 | 78 | 5.72d | 0d |
| 80 | 1.3.3.6 | Realizar maquetado (bocetos) | 6h | 2017-02-20 10:30 | 2017-02-20 18:30 | 79 | 5.72d |  |

Notes:
- 53: Primera Interacción a cubrir
- 54: Conjunto de Actividades para Análisis
- 55: Planeación de Elicitacion
- 56: Análisis del actual proceso empleado a optimizar
- 57: Análisis de requerimientos propios del funcionamiento
- 58: Análisis de requerimientos ajenos al funcionamiento
- 59: Disección de Especificaciones
- 60: Selección de requerimientos prioritarios
- 61: Establecimiento de requerimientos
- 62: Administración de requerimientos
- 63: Selección de requerimientos por importancia
- 64: Resguardo en repositorio
- 65: Distribución de responsabilidades a desarrolladores
- 66: Gestión en modificaciones de requerimientos
- 67: Gestión de seguimiento para requerimientos
- 68: Estimación y Planeación para los elementos a cubrir en la interacción 2
- 69: Re-integración del plan de proyecto
- 70: Agendacion prevista de tareas
- 71: Re-estructuración de WBS
- 72: Definición del Diccionario WBS
- 73: Estimación de presupuesto
- 74: Diagramas a emplear para esta interacción
- 75: Diagrama de caso de uso necesarios
- 76: Diagramas de secuencia basado en los caso de uso
- 77: Establecimiento de clases necesarias
- 78: Diagrama de componentes a usar
- 80: Maquetado visual basado en diagrama ya elaborados

| ID | WBS | Task | Duration | Start | Finish | Predecessors | Total slack | Free slack |
| --- | --- | --- | --- | --- | --- | --- | --- | --- |
| 81 | 1.3.4 | **Codificación** | 1.34d | 2017-02-20 18:30 | 2017-02-22 11:12 | 74 | 5.72d | 0d |
| 82 | 1.3.4.1 | **Modulo Documentos** | 1.34d | 2017-02-20 18:30 | 2017-02-22 11:12 |  | 5.72d |  |
| 83 | 1.3.4.1.1 | Codificar interfaz | 2h | 2017-02-20 18:30 | 2017-02-21 10:30 |  | 5.72d | 0d |
| 84 | 1.3.4.1.2 | Clase de Documentos | 6h | 2017-02-21 10:30 | 2017-02-21 18:30 | 83 | 5.72d | 0d |
| 85 | 1.3.4.1.3 | Realizar conexión a la base de datos | 0.5h | 2017-02-21 18:30 | 2017-02-21 19:00 | 84 | 5.72d | 0d |
| 86 | 1.3.4.1.4 | Baja de Documentos | 0.2h | 2017-02-22 09:00 | 2017-02-22 09:12 | 85 | 5.72d | 0d |
| 87 | 1.3.4.1.5 | Actualización de Documentos | 0.5h | 2017-02-22 09:12 | 2017-02-22 09:42 | 86 | 5.72d | 0d |
| 88 | 1.3.4.1.6 | Consultas de Documentos | 0.5h | 2017-02-22 09:42 | 2017-02-22 10:12 | 87 | 5.72d | 0d |
| 89 | 1.3.4.1.7 | Reportes de Documentos | 1h | 2017-02-22 10:12 | 2017-02-22 11:12 | 88 | 5.72d |  |
| 90 | 1.3.5 | **Pruebas** | 1d | 2017-02-22 11:12 | 2017-02-23 11:12 | 81 | 5.72d |  |
| 91 | 1.3.5.1 | **Realizar pruebas de caja blanca** | 1d | 2017-02-22 11:12 | 2017-02-23 11:12 |  | 5.72d |  |
| 92 | 1.3.5.1.1 | **Módulo de Documentos** | 1d | 2017-02-22 11:12 | 2017-02-23 11:12 |  | 5.72d |  |
| 93 | 1.3.5.1.1.1 | Pruebas unitarias | 4h | 2017-02-22 11:12 | 2017-02-22 17:12 |  | 5.72d | 0d |
| 94 | 1.3.5.1.1.2 | Pruebas de modulo | 4h | 2017-02-22 17:12 | 2017-02-23 11:12 | 93 | 5.72d |  |
| 95 | 1.4 | **Implementación** | 1.62d | 2017-02-23 11:12 | 2017-02-24 18:12 | 53 | 5.72d | 0d |
| 96 | 1.4.1 | Evaluación del servidor local | 3h | 2017-02-23 11:12 | 2017-02-23 16:12 |  | 5.72d | 0d |
| 97 | 1.4.2 | Implementar el sitio al servidor local | 2h | 2017-02-23 16:12 | 2017-02-23 18:12 | 96 | 5.72d | 0d |
| 98 | 1.4.3 | **Realizar pruebas de caja blanca** | 1d | 2017-02-23 18:12 | 2017-02-24 18:12 | 97 | 5.72d |  |
| 99 | 1.4.3.1 | Pruebas de rendimiento | 4h | 2017-02-23 18:12 | 2017-02-24 12:12 |  | 5.72d | 0d |
| 100 | 1.4.3.2 | Pruebas de sistema | 4h | 2017-02-24 12:12 | 2017-02-24 18:12 | 99 | 5.72d |  |
| 101 | 1.5 | **Cierre de proyecto** | 1.38d | 2017-02-24 18:12 | 2017-02-27 17:12 | 95 | 5.72d |  |
| 102 | 1.5.1 | Carta de aceptación | 1h | 2017-02-24 18:12 | 2017-02-25 09:12 |  | 5.72d | 0d |
| 103 | 1.5.2 | Acta de cierre de proyecto | 1h | 2017-02-25 09:12 | 2017-02-25 10:12 | 102 | 5.72d | 0d |
| 104 | 1.5.3 | Evaluación de desempeño | 1h | 2017-02-25 10:12 | 2017-02-25 11:12 | 103 | 5.72d | 0d |
| 105 | 1.5.4 | Junta de lecciones aprendidas | 2h | 2017-02-25 11:12 | 2017-02-27 09:12 | 104 | 5.72d | 0d |
| 106 | 1.5.5 | Revisión de adherencias de procesos | 1h | 2017-02-27 09:12 | 2017-02-27 10:12 | 105 | 5.72d | 0d |
| 107 | 1.5.6 | Liberación de los recursos | 1h | 2017-02-27 10:12 | 2017-02-27 11:12 | 106 | 5.72d | 0d |
| 108 | 1.5.7 | Informe final(cierre) | 4h | 2017-02-27 11:12 | 2017-02-27 17:12 | 107 | 5.72d |  |

Notes:
- 81: Programación de módulos
- 82: Modulo para Usuarios
- 83: Creación de interfaces
- 84: Creación de clases para Usuarios
- 85: Creación de conexión con la BD
- 86: Creación para la dar bajas en Usuarios
- 87: Creación para la modificación de Usuarios
- 88: Creación de consultas para selección de información de Usuarios
- 89: Creación de repostes para Usuarios
- 90: Verificación de módulos terminados
- 91: Pruebas de funcionalidad
- 92: Verificación del modulo Usuarios
- 93: Pruebas por Unidad
- 94: Pruebas de Modulo completo
- 95: Realización de la Implementación
- 96: Selección y evaluación de servicio de hosting
- 97: Implementación en hosting seleccionado
- 98: Pruebas con respecto a las salidas
- 99: Evaluación del rendimiento
- 100: Evaluación del sistema completo
- 101: Cierre y culminación del proyecto
- 102: Creación y llenado de carta de aceptación del proyecto
- 103: Creación y llenado del acta de cierre del proyecto
- 104: Análisis del desempeño durante el proyecto
- 105: Reunión de conocimiento nuevo adquirido del proyecto
- 106: Análisis de proceso y optimización del mismo
- 108: Creación del informe del proyecto

| ID | WBS | Task | Duration | Start | Finish | Total slack | Constraint |
| --- | --- | --- | --- | --- | --- | --- | --- |
| 110 | 2 | **UTL** | 45d | 2017-01-09 09:00 | 2017-03-06 19:00 | 0d |  |
| 111 | 2.1 | UTL 1 | 1d | 2017-01-09 09:00 | 2017-01-09 19:00 | 44d | start no earlier than 2017-01-09 09:00 |
| 112 | 2.2 | UTL 2 | 1d | 2017-01-16 09:00 | 2017-01-16 19:00 | 38.5d | start no earlier than 2017-01-16 09:00 |
| 113 | 2.3 | UTL 3 | 1d | 2017-01-23 09:00 | 2017-01-23 19:00 | 33d | start no earlier than 2017-01-23 09:00 |
| 114 | 2.4 | UTL 4 | 1d | 2017-01-30 09:00 | 2017-01-30 19:00 | 27.5d | start no earlier than 2017-01-30 09:00 |
| 115 | 2.5 | UTL 5 | 1d | 2017-02-06 09:00 | 2017-02-06 19:00 | 22d | start no earlier than 2017-02-06 09:00 |
| 116 | 2.6 | UTL 6 | 1d | 2017-02-13 09:00 | 2017-02-13 19:00 | 16.5d | start no earlier than 2017-02-13 09:00 |
| 117 | 2.7 | UTL 7 | 1d | 2017-02-20 09:00 | 2017-02-20 19:00 | 11d | start no earlier than 2017-02-20 09:00 |
| 118 | 2.8 | UTL 8 | 1d | 2017-02-27 09:00 | 2017-02-27 19:00 | 5.5d | start no earlier than 2017-02-27 09:00 |
| 119 | 2.9 | UTL 9 | 1d | 2017-03-06 09:00 | 2017-03-06 19:00 | 0d | start no earlier than 2017-03-06 09:00 |
| 121 | 3 | **RPCC** | 39.5d | 2017-01-12 09:00 | 2017-03-02 19:00 |  |  |
| 122 | 3.1 | RPCC 1 | 1d | 2017-01-12 09:00 | 2017-01-12 19:00 | 41d | start no earlier than 2017-01-12 09:00 |
| 123 | 3.2 | RPCC 2 | 1d | 2017-01-19 09:00 | 2017-01-19 19:00 | 35.5d | start no earlier than 2017-01-19 09:00 |
| 124 | 3.3 | RPCC 3 | 1d | 2017-01-26 09:00 | 2017-01-26 19:00 | 30d | start no earlier than 2017-01-26 09:00 |
| 125 | 3.4 | RPCC 4 | 1d | 2017-02-06 09:00 | 2017-02-06 19:00 | 22d | start no earlier than 2017-02-06 09:00 |
| 126 | 3.5 | RPCC 5 | 1d | 2017-02-09 09:00 | 2017-02-09 19:00 | 19d | start no earlier than 2017-02-09 09:00 |
| 127 | 3.6 | RPCC 6 | 1d | 2017-02-16 09:00 | 2017-02-16 19:00 | 13.5d | start no earlier than 2017-02-16 09:00 |
| 128 | 3.7 | RPCC 7 | 1d | 2017-02-23 09:00 | 2017-02-23 19:00 | 8d | start no earlier than 2017-02-23 09:00 |
| 129 | 3.8 | RPCC 8 | 1d | 2017-03-02 09:00 | 2017-03-02 19:00 | 2.5d | start no earlier than 2017-03-02 09:00 |
